| TaskID | TaskName | Duration | DurationUnit | Progress | StartDate | EndDate | resources | Predecessor |
| --- | --- | --- | --- | --- | --- | --- | --- | --- |
| 1 | Planning | 15 | day | 25 | 2022-09-19T01:00:00.000Z | 2022-10-07T10:00:00.000Z | Manager+Analyst Manager+Analyst 100 |  |
| 7 | · Analysis: Master | 15 | day | 0 | 2022-09-19T01:00:00.000Z | 2022-10-07T10:00:00.000Z | Manager+Analyst Manager+Analyst 100 |  |
| 8 | · Analysis: Player | 15 | day | 0 | 2022-09-19T01:00:00.000Z | 2022-10-07T10:00:00.000Z | Analyst+Devops Analyst+Devops 100 | 7SS |
| 9 | · Analysis: Features | 15 | day | 0 | 2022-09-19T01:00:00.000Z | 2022-10-07T10:00:00.000Z | Analyst+Android-2 Analyst+Android-2 100 | 7SS |
| 10 | · Analysis: Equipment | 15 | day | 100 | 2022-09-19T01:00:00.000Z | 2022-10-07T10:00:00.000Z | Analyst+Android-1 Analyst+Android-1 100 | 7SS |
| 2 | Iteration 1: System | 17 | day | 0 | 2022-10-10T01:00:00.000Z | 2022-11-01T10:00:00.000Z | Manager+Analyst Manager+Analyst 100 |  |
| 11 | · Definition of Entities & API | 7 | day | 0 | 2022-10-10T01:00:00.000Z | 2022-10-18T10:00:00.000Z | Architect+Backend Architect+Backend 100 | 7FS,8FS,9FS,10FS |
| 14 | · Mockup UI impl | 4 | day | 0 | 2022-10-13T01:00:00.000Z | 2022-10-18T10:00:00.000Z | Android+Designer Android+Designer 100, Android Android 100, Analyst+Android-1 Analyst+Android-1 100, Analyst+Android-2 Analyst+Android-2 100 | 13FS |
| 13 | · System UI Mockups | 3 | day | 0 | 2022-10-10T01:00:00.000Z | 2022-10-12T10:00:00.000Z | Android+Designer Android+Designer 100 | 11SS |
| 15 | · Mockup api calls impl | 7 | day | 0 | 2022-10-19T01:00:00.000Z | 2022-10-27T10:00:00.000Z | Android+Designer Android+Designer 100, Android Android 100, Analyst+Android-1 Analyst+Android-1 100, Analyst+Android-2 Analyst+Android-2 100 | 11FS,14FS |
| 16 | · App & server integration | 3 | day | 0 | 2022-10-28T01:00:00.000Z | 2022-11-01T10:00:00.000Z |  | 20FS,15FS |
| 17 | · Integration tests | 3 | day | 0 | 2022-10-28T01:00:00.000Z | 2022-11-01T10:00:00.000Z | QA QA 100 | 16SS,16FF |
| 18 | · Test environment provision | 2 | day | 0 | 2022-10-10T01:00:00.000Z | 2022-10-11T10:00:00.000Z | Analyst+Devops Analyst+Devops 100 | 11SS |
| 19 | · Echo server impl | 2 | day | 0 | 2022-10-12T01:00:00.000Z | 2022-10-13T10:00:00.000Z | Backend-1 Backend-1 100, Backend-2 Backend-2 100 | 18FS |
| 20 | · Server api impl | 7 | day | 0 | 2022-10-19T01:00:00.000Z | 2022-10-27T10:00:00.000Z | Backend-1 Backend-1 100, Backend-2 Backend-2 100, Architect+Backend Architect+Backend 100 | 19FS,11FS |
| 21 | · Risk analysis | 3 | day | 0 | 2022-10-19T01:00:00.000Z | 2022-10-21T10:00:00.000Z | Manager+Analyst Manager+Analyst 100 | 11FS |
